# IMPLRMENTACION

Schedule from MS Project, 2016-11-03 to 2016-12-01, A marks actual dates.
Microsoft

## Calendars

- Estándar: Mon-Fri 09:00-13:00, 15:00-19:00; Sat-Sun off.

## Resources

| Resource |
| --- |
| Adriana Reist |
| Alejandra Lima |
| Alejandro Cambas |
| Alejandro Cespedes |
| Alejandro Moralez |
| Alexandre Cordoba |
| Analia Schilder |
| Andres Buyatti |
| Ariel Gomez |
| Ariel Noguera |
| Cesar Seniuk |
| Cristian Osorio |
| Cristian Quevedo |
| Cristian Rey |
| Damian Betancur |
| Daniel Maidana |
| Daniela Cardozo |
| Eber Zarza |
| Enzo Martinez |
| Fabiana Gonzalez |
| Facundo Barrios |
| Fernando Pilach |
| Guillermo Diaz |
| Hugo Monferrer |
| Jorge Asayag |
| Karina Prestes |
| Lidia Zacarias |
| Lorena Leiva |
| Lorena Niveyro |
| Luis Daluz |
| Mario Prado |
| Mario Slabosevicius |
| Marisamel Villaruel |
| Marta Amigo |
| Martin Alegre |
| Martin Idiarte |
| Mauricio Lopez |
| Nahuel Casullo |
| Nestor Villalba |
| Nicolas Ledesma |
| Nicolas Pilach |
| Omar Barrientos |
| Omar Barrios |
| Orlando Coronel |
| Oscar Arzamendia |
| Paula Giuliano |
| Ricardo Palamarchuk |
| Rosa Lezcano |
| Santiago Fretes |
| Sebastian Aguirre |
| Sebastian Camacho |
| Sebastian Siergiejenia |
| Sinaide Martinez |
| Trinidad Avellanal |
| Veronica Rodriguez |
| Veronica Talavera |
| Jose Manfredi |
| Fabián Koch |
| Enrique Fainstein Day |
| Juan Calcagno |
| Matias Julian |

## Schedule

| ID | WBS | Task | Duration | Start | Finish | Complete | Remaining | Total slack |
| --- | --- | --- | --- | --- | --- | --- | --- | --- |
| 1 | 1 | **OCTOSIS** | 21d | 2016-11-03 A | 2016-12-01 | 1% | 20.74d |  |
| 2 | 1.1 | **CIERRE DE MODELO** | 2d | 2016-11-03 A | 2016-11-04 A | 100% |  |  |
| 3 | 1.1.1 | Definición de alcance | 2d | 2016-11-03 A | 2016-11-04 A | 100% |  |  |
| 4 | 1.1.2 | Venta | 2d | 2016-11-03 A | 2016-11-04 A | 100% |  |  |
| 5 | 1.1.3 | Compra | 2d | 2016-11-03 A | 2016-11-04 A | 100% |  |  |
| 6 | 1.2 | **DESARROLLO DE INTERFACE** | 5d | 2016-11-14 | 2016-11-18 |  |  |  |
| 7 | 1.2.1 | **Contabilidad** | 5d | 2016-11-14 | 2016-11-18 |  |  | 9d |
| 8 | 1.2.1.1 | **Gestión de Stock** | 5d | 2016-11-14 | 2016-11-18 |  |  | 9d |
| 9 | 1.2.1.1.1 | Importador de Asientos (Registración Contable a PPP) | 5d | 2016-11-14 | 2016-11-18 |  |  | 9d |
| 10 | 1.2.1.2 | **Servicio de Taller** | 5d | 2016-11-14 | 2016-11-18 |  |  | 9d |
| 11 | 1.2.1.2.1 | Importador de Asientos (Registración Contable a Cierre de OT) | 5d | 2016-11-14 | 2016-11-18 |  |  | 9d |
| 12 | 1.2.1.3 | **Unidades** | 5d | 2016-11-14 | 2016-11-18 |  |  | 9d |
| 13 | 1.2.1.3.1 | Importador de Asientos (Registración Contable a Costo de Venta) | 5d | 2016-11-14 | 2016-11-18 |  |  | 9d |
| 14 | 1.2.2 | **Facturación** | 5d | 2016-11-14 | 2016-11-18 |  |  | 9d |
| 15 | 1.2.2.1 | Unidades | 5d | 2016-11-14 | 2016-11-18 |  |  | 9d |
| 16 | 1.2.2.2 | Repuestos (NPR) | 5d | 2016-11-14 | 2016-11-18 |  |  | 9d |
| 17 | 1.2.2.3 | Servicios (CS-CR) | 5d | 2016-11-14 | 2016-11-18 |  |  | 9d |
| 18 | 1.2.2.4 | Contabilidad en función a documentos recibidos | 5d | 2016-11-14 | 2016-11-18 |  |  | 9d |
| 19 | 1.3 | **DESARROLLO DE SCRIPTS MIGRADORES** | 5d | 2016-11-14 | 2016-11-18 |  |  |  |
| 20 | 1.3.1 | Importador de Clientes | 5d | 2016-11-14 | 2016-11-18 |  |  | 9d |
| 21 | 1.3.2 | Importador de Limites de crédito y descuentos de clientes | 5d | 2016-11-14 | 2016-11-18 |  |  | 9d |
| 22 | 1.3.3 | Importador de Vehiculos de Clientes | 5d | 2016-11-14 | 2016-11-18 |  |  | 9d |
| 23 | 1.3.4 | Importador de Proveedores | 5d | 2016-11-14 | 2016-11-18 |  |  | 9d |
| 24 | 1.3.5 | Importador de Unidades | 5d | 2016-11-14 | 2016-11-18 |  |  | 9d |
| 25 | 1.3.6 | Listas de Precio Unidades | 5d | 2016-11-14 | 2016-11-18 |  |  | 9d |
| 26 | 1.3.7 | Importador de artículos | 5d | 2016-11-14 | 2016-11-18 |  |  | 9d |
| 27 | 1.3.8 | Importador de Ordenes de Reparación | 5d | 2016-11-14 | 2016-11-18 |  |  | 9d |
| 28 | 1.3.9 | Importador de Historico Ordenes de Reparación | 5d | 2016-11-14 | 2016-11-18 |  |  | 9d |
| 29 | 1.3.10 | Importador de Ordenes Cargos Directos | 5d | 2016-11-14 | 2016-11-18 |  |  | 9d |
| 30 | 1.3.11 | Importador de Ordenes de trabajos de Terceros | 5d | 2016-11-14 | 2016-11-18 |  |  | 9d |
| 31 | 1.3.12 | Importador de Ordenes de trabajo en Garantía | 5d | 2016-11-14 | 2016-11-18 |  |  | 9d |
| 32 | 1.3.13 | Importador de Presupuestos de venta de repuestos vigentes | 5d | 2016-11-14 | 2016-11-18 |  |  | 9d |
| 33 | 1.3.14 | Importador de Ordenes Repuestos | 5d | 2016-11-14 | 2016-11-18 |  |  | 9d |
| 34 | 1.3.15 | Formato Ordenes de Compra pend. En Cabecera | 5d | 2016-11-14 | 2016-11-18 |  |  | 9d |
| 35 | 1.3.16 | Formato ordenes de Compra Pendientes | 5d | 2016-11-14 | 2016-11-18 |  |  | 9d |
| 36 | 1.3.17 | Formatos Comprobantes de Compra en cta cte | 5d | 2016-11-14 | 2016-11-18 |  |  | 9d |
| 37 | 1.3.18 | Formato Comp. Ventas en Cta Ctes | 5d | 2016-11-14 | 2016-11-18 |  |  | 9d |

| ID | WBS | Task | Duration | Start | Finish | Total slack |
| --- | --- | --- | --- | --- | --- | --- |
| 38 | 1.4 | **PARAMETRIZACIÓN Y AJUSTES** | 5d | 2016-11-14 | 2016-11-18 |  |
| 39 | 1.4.1 | Listas de Precios de venta de unidades | 5d | 2016-11-14 | 2016-11-18 | 9d |
| 40 | 1.4.2 | Listas de Precios de compra de Unidades | 5d | 2016-11-14 | 2016-11-18 | 9d |
| 41 | 1.4.3 | Listas de Precio de Reposición de Unidades | 5d | 2016-11-14 | 2016-11-18 | 9d |
| 42 | 1.4.4 | Medios de Pago Cliente/Proveedores | 5d | 2016-11-14 | 2016-11-18 | 9d |
| 43 | 1.4.5 | Condiciones de Pago Proveedores | 5d | 2016-11-14 | 2016-11-18 | 9d |
| 44 | 1.4.6 | Condiciones de Pago Clientes | 5d | 2016-11-14 | 2016-11-18 | 9d |
| 45 | 1.4.7 | Listas de Caracteristicas de Unidades | 5d | 2016-11-14 | 2016-11-18 | 9d |
| 46 | 1.4.8 | Lista de estados de Pedidos a Fabrica | 5d | 2016-11-14 | 2016-11-18 | 9d |
| 47 | 1.4.9 | Perfiles de Jefe de Repuestos | 5d | 2016-11-14 | 2016-11-18 | 9d |
| 48 | 1.4.10 | Perfil de Vendedor de Repuestos | 5d | 2016-11-14 | 2016-11-18 | 9d |
| 49 | 1.4.11 | Perfiles de Vendedores de Unidades | 5d | 2016-11-14 | 2016-11-18 | 9d |
| 50 | 1.4.12 | Configuración Orden de Compra | 5d | 2016-11-14 | 2016-11-18 | 9d |
| 51 | 1.4.13 | Configuración Propuesta de Operación | 5d | 2016-11-14 | 2016-11-18 | 9d |
| 52 | 1.4.14 | Configuración de Boleto de Venta y Anexos | 5d | 2016-11-14 | 2016-11-18 | 9d |
| 53 | 1.4.15 | Configuración de Stock de unidades para la venta | 5d | 2016-11-14 | 2016-11-18 | 9d |
| 54 | 1.4.16 | Confeccion de manuales de Usuarios Taller | 5d | 2016-11-14 | 2016-11-18 | 9d |
| 55 | 1.4.17 | Confeccion de manuales de usuarios Venta de Repuestos | 5d | 2016-11-14 | 2016-11-18 | 9d |
| 56 | 1.4.18 | Confeccion de manuales de usuarios Venta de Unidades | 5d | 2016-11-14 | 2016-11-18 | 9d |
| 57 | 1.5 | **PREPARACIÓN DE SERVIDORES** | 5d | 2016-11-14 | 2016-11-18 |  |
| 58 | 1.5.1 | Servidor de Pruebas | 5d | 2016-11-14 | 2016-11-18 | 9d |
| 59 | 1.5.2 | Servidor de Producción | 5d | 2016-11-14 | 2016-11-18 | 9d |
| 60 | 1.6 | **PRUEBAS UNITARIAS** | 5d | 2016-11-16 | 2016-11-22 |  |
| 61 | 1.6.1 | **Preparación de Pruebas Unitarias** | 5d | 2016-11-16 | 2016-11-22 | 7d |
| 62 | 1.6.1.1 | Administración | 5d | 2016-11-16 | 2016-11-22 | 7d |
| 63 | 1.6.1.2 | venta de repuestos | 5d | 2016-11-16 | 2016-11-22 | 7d |
| 64 | 1.6.1.3 | taller | 5d | 2016-11-16 | 2016-11-22 | 7d |
| 65 | 1.6.1.4 | unidades | 5d | 2016-11-16 | 2016-11-22 | 7d |

| ID | WBS | Task | Duration | Start | Finish | Total slack |
| --- | --- | --- | --- | --- | --- | --- |
| 66 | 1.6.2 | **GESTION DE STOCK** | 1d | 2016-11-16 | 2016-11-16 | 11d |
| 67 | 1.6.2.1 | Compras | 1d | 2016-11-16 | 2016-11-16 | 11d |
| 68 | 1.6.2.2 | Facturas de Terceros | 1d | 2016-11-16 | 2016-11-16 | 11d |
| 69 | 1.6.2.3 | Entradas | 1d | 2016-11-16 | 2016-11-16 | 11d |
| 70 | 1.6.2.4 | Salidas | 1d | 2016-11-16 | 2016-11-16 | 11d |
| 71 | 1.6.2.5 | Otros Movimientos | 1d | 2016-11-16 | 2016-11-16 | 11d |
| 72 | 1.6.2.6 | Contabilizacion | 1d | 2016-11-16 | 2016-11-16 | 11d |
| 73 | 1.6.3 | **SERVICIO DE TALLER** | 1d | 2016-11-16 | 2016-11-16 | 11d |
| 74 | 1.6.3.1 | Consumos | 1d | 2016-11-16 | 2016-11-16 | 11d |
| 75 | 1.6.3.2 | Manejo de Ordenes | 1d | 2016-11-16 | 2016-11-16 | 11d |
| 76 | 1.6.3.3 | Facturas de Terceros | 1d | 2016-11-16 | 2016-11-16 | 11d |
| 77 | 1.6.3.4 | Contabilizacion | 1d | 2016-11-16 | 2016-11-16 | 11d |
| 78 | 1.6.4 | **UNIDADES** | 1d | 2016-11-16 | 2016-11-16 | 11d |
| 79 | 1.6.4.1 | Compras | 1d | 2016-11-16 | 2016-11-16 | 11d |
| 80 | 1.6.4.2 | Facturas de Terceros | 1d | 2016-11-16 | 2016-11-16 | 11d |
| 81 | 1.6.4.3 | Entradas | 1d | 2016-11-16 | 2016-11-16 | 11d |
| 82 | 1.6.4.4 | Salidas | 1d | 2016-11-16 | 2016-11-16 | 11d |
| 83 | 1.6.4.5 | Otros Movimientos | 1d | 2016-11-16 | 2016-11-16 | 11d |
| 84 | 1.6.4.6 | Contabilizacion | 1d | 2016-11-16 | 2016-11-16 | 11d |
| 85 | 1.6.5 | **FACTURACION** | 1d | 2016-11-16 | 2016-11-16 | 11d |
| 86 | 1.6.5.1 | Unidades | 1d | 2016-11-16 | 2016-11-16 | 11d |
| 87 | 1.6.5.2 | Repuestos | 1d | 2016-11-16 | 2016-11-16 | 11d |
| 88 | 1.6.5.3 | Servicio | 1d | 2016-11-16 | 2016-11-16 | 11d |
| 89 | 1.6.5.4 | Varios | 1d | 2016-11-16 | 2016-11-16 | 11d |
| 90 | 1.6.5.5 | Contabilizacion | 1d | 2016-11-16 | 2016-11-16 | 11d |

| ID | WBS | Task | Duration | Start | Finish | Total slack |
| --- | --- | --- | --- | --- | --- | --- |
| 91 | 1.6.6 | **CLIENTES** | 1d | 2016-11-16 | 2016-11-16 | 11d |
| 92 | 1.6.6.1 | ABM de Clientes | 1d | 2016-11-16 | 2016-11-16 | 11d |
| 93 | 1.6.6.2 | Gestión de Cobranza | 1d | 2016-11-16 | 2016-11-16 | 11d |
| 94 | 1.6.6.3 | Cuenta Corriente | 1d | 2016-11-16 | 2016-11-16 | 11d |
| 95 | 1.6.7 | **TESORERIA** | 1d | 2016-11-16 | 2016-11-16 | 11d |
| 96 | 1.6.7.1 | Recibos | 1d | 2016-11-16 | 2016-11-16 | 11d |
| 97 | 1.6.7.2 | Ordenes de Pago | 1d | 2016-11-16 | 2016-11-16 | 11d |
| 98 | 1.6.7.3 | Depósitos | 1d | 2016-11-16 | 2016-11-16 | 11d |
| 99 | 1.6.7.4 | Cheques Rechazados | 1d | 2016-11-16 | 2016-11-16 | 11d |
| 100 | 1.6.7.5 | Otros Movimientos | 1d | 2016-11-16 | 2016-11-16 | 11d |
| 101 | 1.6.8 | **IMPUESTOS** | 1d | 2016-11-16 | 2016-11-16 | 11d |
| 102 | 1.6.8.1 | IVA | 1d | 2016-11-16 | 2016-11-16 | 11d |
| 103 | 1.6.8.2 | Retenciones | 1d | 2016-11-16 | 2016-11-16 | 11d |
| 104 | 1.6.8.3 | Percepciones | 1d | 2016-11-16 | 2016-11-16 | 11d |
| 105 | 1.6.8.4 | IIBB | 1d | 2016-11-16 | 2016-11-16 | 11d |
| 106 | 1.6.8.5 | Presentaciones | 1d | 2016-11-16 | 2016-11-16 | 11d |
| 107 | 1.6.9 | **CUENTA GESTION MBA** | 1d | 2016-11-16 | 2016-11-16 | 11d |
| 108 | 1.6.9.1 | Estado de Cuenta | 1d | 2016-11-16 | 2016-11-16 | 11d |
| 109 | 1.6.9.2 | Extracto de Cuenta | 1d | 2016-11-16 | 2016-11-16 | 11d |
| 110 | 1.6.9.3 | Movimientos de Cuenta | 1d | 2016-11-16 | 2016-11-16 | 11d |
| 111 | 1.6.9.4 | Transferir Saldo | 1d | 2016-11-16 | 2016-11-16 | 11d |
| 112 | 1.6.10 | **CONTABILIDAD** | 1d | 2016-11-16 | 2016-11-16 | 11d |
| 113 | 1.6.10.1 | Balance | 1d | 2016-11-16 | 2016-11-16 | 11d |
| 114 | 1.6.10.2 | Informes | 1d | 2016-11-16 | 2016-11-16 | 11d |
| 115 | 1.6.10.3 | otros Asientos | 1d | 2016-11-16 | 2016-11-16 | 11d |

| ID | WBS | Task | Duration | Start | Finish | Total slack |
| --- | --- | --- | --- | --- | --- | --- |
| 116 | 1.7 | **PRUEBAS DE INTEGRACIÓN** | 5d | 2016-11-21 | 2016-11-25 |  |
| 117 | 1.7.1 | Preparación de Pruebas de Integración | 1d? | 2016-11-21 | 2016-11-21 | 8d |
| 118 | 1.7.2 | Administración | 5d | 2016-11-21 | 2016-11-25 | 4d |
| 119 | 1.7.3 | venta de repuestos | 5d | 2016-11-21 | 2016-11-25 | 4d |
| 120 | 1.7.4 | taller | 5d | 2016-11-21 | 2016-11-25 | 4d |
| 121 | 1.7.5 | unidades | 5d | 2016-11-21 | 2016-11-25 | 4d |
| 122 | 1.8 | **CAPACITACIÓN DE USUARIO** | 5d | 2016-11-21 | 2016-11-25 |  |
| 123 | 1.8.1 | **Venta de Repuestos** | 5d | 2016-11-21 | 2016-11-25 | 4d |
| 124 | 1.8.1.1 | Piezas: ver listados movimientos de piezas (analítico de la pieza) y niveles de stock. | 5d | 2016-11-21 | 2016-11-25 | 4d |
| 125 | 1.8.1.2 | Actualización del catálogo de piezas: listas de precios y costos | 5d | 2016-11-21 | 2016-11-25 | 4d |
| 126 | 1.8.1.3 | Pedidos a Fábrica (generados en el sistema bejerman y extranet de la marca) | 5d | 2016-11-21 | 2016-11-25 | 4d |
| 127 | 1.8.1.4 | Pedidos a Proveedores Alternativos | 5d | 2016-11-21 | 2016-11-25 | 4d |
| 128 | 1.8.1.5 | Ingreso de mercadería en stock | 5d | 2016-11-21 | 2016-11-25 | 4d |
| 129 | 1.8.1.6 | Registros de Stock y transferencias: stock real, disponible y comprometido. | 5d | 2016-11-21 | 2016-11-25 | 4d |
| 130 | 1.8.1.7 | Egresos de mercadería: venta por mostrador taller/ externo. | 1d | 2016-11-21 | 2016-11-21 | 8d |
| 131 | 1.8.1.8 | Venta por mostrador externo: generación de presupuesto, nota de venta y factura. Aplicación de descuentos y diferentes listas de precios según cliente y artículo. Vencimiento de comprobantes | 5d | 2016-11-21 | 2016-11-25 | 4d |
| 132 | 1.8.1.9 | Sugerido de compras: niveles de stock, rotación en el último año, demanda. Analizar los parámetros que se consideran para el sugerido de compras | 5d | 2016-11-21 | 2016-11-25 | 4d |
| 133 | 1.8.1.10 | Ventas Perdidas: registro de venta perdida y generación de reportes. | 5d | 2016-11-21 | 2016-11-25 | 4d |
| 134 | 1.8.1.11 | Devoluciones: generación de comprobantes y control de devoluciones: comparar contra fecha de factura. | 1d | 2016-11-21 | 2016-11-21 | 8d |
| 135 | 1.8.1.12 | Transferencias entre depósitos: remitos de transferencia y contabilización de piezas. | 1d | 2016-11-21 | 2016-11-21 | 8d |
| 136 | 1.8.1.13 | Indicadores e informes | 1d | 2016-11-21 | 2016-11-21 | 8d |
| 137 | 1.8.2 | **Taller** | 5d | 2016-11-21 | 2016-11-25 |  |
| 138 | 1.8.2.1 | Alta de cliente | 1d | 2016-11-21 | 2016-11-21 | 8d |
| 139 | 1.8.2.2 | Alta de unidad | 1d | 2016-11-21 | 2016-11-21 | 8d |
| 140 | 1.8.2.3 | Asignación de turno especifico | 1d | 2016-11-21 | 2016-11-21 | 8d |
| 141 | 1.8.2.4 | Asignación de turno de diagnostico | 1d | 2016-11-21 | 2016-11-21 | 8d |
| 142 | 1.8.2.5 | Apertura Pre orden de reparación | 1d | 2016-11-21 | 2016-11-21 | 8d |
| 143 | 1.8.2.6 | Apertura Orden de Reparación | 1d | 2016-11-21 | 2016-11-21 | 8d |
| 144 | 1.8.2.7 | Registro de la ejecución de trabajos en el taller | 1d | 2016-11-21 | 2016-11-21 | 8d |
| 145 | 1.8.2.8 | Pedido de Repuestos | 1d | 2016-11-21 | 2016-11-21 | 8d |
| 146 | 1.8.2.9 | Cierre de Orden de reparación | 1d | 2016-11-21 | 2016-11-21 | 8d |
| 147 | 1.8.2.10 | Facturación de Orden de Reparación de acuerdo a los cargos establecidos. | 1d | 2016-11-21 | 2016-11-21 | 8d |
| 148 | 1.8.2.11 | Trabajos en Garantía | 1d | 2016-11-21 | 2016-11-21 | 8d |
| 149 | 1.8.2.12 | Registro de ventas perdidas | 1d | 2016-11-21 | 2016-11-21 | 8d |
| 150 | 1.8.2.13 | Generación de reportes e indicadores | 1d | 2016-11-21 | 2016-11-21 | 8d |
| 151 | 1.8.2.14 | Importación de Orden de Trabajo Delear portal CJD | 1d | 2016-11-21 | 2016-11-21 | 8d |
| 152 | 1.8.2.15 | Importación de Ordenes de trabajo al Delear extranet MB | 1d | 2016-11-21 | 2016-11-21 | 8d |

| ID | WBS | Task | Type | Duration | Start | Finish | Total slack |
| --- | --- | --- | --- | --- | --- | --- | --- |
| 153 | 1.8.3 | **Unidades** |  | 5d | 2016-11-21 | 2016-11-25 |  |
| 154 | 1.8.3.1 | **Inventario de Unidades** |  | 1d | 2016-11-21 | 2016-11-21 | 8d |
| 155 | 1.8.3.1.1 | Registrar y consultar los movimientos de stock de unidades |  | 1d | 2016-11-21 | 2016-11-21 | 8d |
| 156 | 1.8.3.1.2 | Lista de Precios |  | 1d | 2016-11-21 | 2016-11-21 | 8d |
| 157 | 1.8.3.1.3 | Generación de informes |  | 1d | 2016-11-21 | 2016-11-21 | 8d |
| 158 | 1.8.3.2 | **Customer Relationship Management (CRM)** |  | 1d | 2016-11-21 | 2016-11-21 | 0d |
| 159 | 1.8.3.2.1 | Registrar y consultar los clientes potenciales y prospectos |  | 1d | 2016-11-21 | 2016-11-21 | 8d |
| 160 | 1.8.3.2.2 | Registrar, consultar y modificar agenda de vendedores. |  | 1d | 2016-11-21 | 2016-11-21 | 8d |
| 161 | 1.8.3.2.3 | Registro de ventas perdidas unidades |  | 1d | 2016-11-21 | 2016-11-21 | 8d |
| 162 | 1.8.3.2.4 | Emisión de informes. |  | 1d | 2016-11-21 | 2016-11-21 | 8d |
| 163 | 1.8.3.2.5 | Tablas Relativas a Clientes: Zonas, Rubros, entre otros. | manual | 1d | 2016-11-21 | 2016-11-21 |  |
| 164 | 1.8.3.3 | **Proceso de Ventas de Unidades** |  | 1d | 2016-11-21 | 2016-11-21 | 8d |
| 165 | 1.8.3.3.1 | Tipos de comprobantes Conceptos: Explicación del alta Clientes - Explicación del alta Vendedores. |  | 1d | 2016-11-21 | 2016-11-21 | 8d |
| 166 | 1.8.3.3.2 | Registración de ventas: Ingreso de comprobantes. Propuesta de Ventas y Boleto de Ventas. Generación de Protocolo de Ventas (medios de pago, listas de precio y descuentos, vencimientos) |  | 1d | 2016-11-21 | 2016-11-21 | 8d |
| 167 | 1.8.3.3.3 | Registro, consulta y modificación en al asignación y reserva de la unidad |  | 1d | 2016-11-21 | 2016-11-21 | 8d |
| 168 | 1.8.3.3.4 | Emisión, modificación y cancelación de comprobantes: recibos de pagos, factura de la unidad, remito de entrega. Nota de crédito, comprobantes internos (minuta de debito y crédito). Fichas de clientes |  | 1d | 2016-11-21 | 2016-11-21 | 8d |
| 169 | 1.8.3.3.5 | Emisión de informes |  | 1d | 2016-11-21 | 2016-11-21 | 8d |
| 170 | 1.8.3.3.6 | Tablas Relativas a Clientes: Zonas, Rubros, Transportes, Descuentos, entre otros. |  | 1d | 2016-11-21 | 2016-11-21 | 8d |
| 171 | 1.8.3.3.7 | Informes: Relacionados con los comprobantes de ventas y con las cobranzas. |  | 1d | 2016-11-21 | 2016-11-21 | 8d |
| 172 | 1.8.3.4 | **Finanzas** |  | 1d | 2016-11-21 | 2016-11-21 | 8d |
| 173 | 1.8.3.4.1 | Movimientos financieros de la empresa, procesamiento y control. |  | 1d | 2016-11-21 | 2016-11-21 | 8d |
| 174 | 1.8.3.4.2 | Administración de movimientos de fondos en Banco y Caja, con el control de cheques y documentos, tanto propios como de terceros, con la información de su estado y condición. |  | 1d | 2016-11-21 | 2016-11-21 | 8d |
| 175 | 1.8.3.4.3 | Tablas Relativas a Finanzas. Tipos de valores |  | 1d | 2016-11-21 | 2016-11-21 | 8d |
| 176 | 1.8.3.4.4 | Depositos y descuento de documentos en bancos. |  | 1d | 2016-11-21 | 2016-11-21 | 8d |
| 177 | 1.8.3.4.5 | Modificar y consultar los datos ingresados de cheques propios y de terceros (clasificación por sucursal), de documentos a cobrar y de obligaciones a pagar. |  | 1d | 2016-11-21 | 2016-11-21 | 8d |
| 178 | 1.8.3.4.6 | Conciliación Bancaria: Confeccionar las conciliaciones bancarias. |  | 1d | 2016-11-21 | 2016-11-21 | 8d |
| 179 | 1.8.3.4.7 | Regimenes de Retenciones y Alicuotas |  | 1d | 2016-11-21 | 2016-11-21 | 8d |

| ID | WBS | Task | Duration | Start | Finish | Total slack |
| --- | --- | --- | --- | --- | --- | --- |
| 180 | 1.8.3.5 | **Análisis Financiero** | 1d | 2016-11-21 | 2016-11-21 | 8d |
| 181 | 1.8.3.5.1 | Definir modelos y emitir los informes que permiten realizar las proyecciones y el análisis financiero de la empresa. | 1d | 2016-11-21 | 2016-11-21 | 8d |
| 182 | 1.8.3.5.2 | Informes | 1d | 2016-11-21 | 2016-11-21 | 8d |
| 183 | 1.8.3.5.3 | Obtener listados referentes a los movimientos de fondos registrados en los módulos de finanzas, cobros y pagos. | 1d | 2016-11-21 | 2016-11-21 | 8d |
| 184 | 1.8.3.5.4 | Listado de Movimientos de fondos por concepto para obtener estados de cajas, bancos, orígenes varios, etc. | 1d | 2016-11-21 | 2016-11-21 | 8d |
| 185 | 1.8.3.6 | **Cuentas a pagar** | 1d | 2016-11-21 | 2016-11-21 | 8d |
| 186 | 1.8.3.6.1 | Emisión de comprobantes: impresión de un comprobante en concepto de cancelaciones o requerimientos de compra. | 1d | 2016-11-21 | 2016-11-21 | 8d |
| 187 | 1.8.3.6.2 | Administración de pagos de la empresa; emisión de órdenes de pago, su registración, compensación y la emisión de listados. | 1d | 2016-11-21 | 2016-11-21 | 8d |
| 188 | 1.8.3.6.3 | Registrar, consultar y modificar los fondos fijos y rendiciones de gastos de la empresa | 1d | 2016-11-21 | 2016-11-21 | 8d |
| 189 | 1.8.3.7 | **Compras** | 1d | 2016-11-21 | 2016-11-21 | 8d |
| 190 | 1.8.3.7.1 | Actualizar y consultar a los proveedores, registrar las compras, el work flow de compras, determinar el prorrateo de gastos y obtener informes. | 1d | 2016-11-21 | 2016-11-21 | 8d |
| 191 | 1.8.3.7.2 | Proveedores: Alta - Modificación - Baja | 1d | 2016-11-21 | 2016-11-21 | 8d |
| 192 | 1.8.3.7.3 | Ingreso de Comprobantes de Compras: Remito - Factura - Notas de Crédito - Comprobantes internos (minutas de crédito y débito) | 1d | 2016-11-21 | 2016-11-21 | 8d |
| 193 | 1.8.3.7.4 | Registrar, consultar y modificar los comprobantes recibidos por la empresa en sus operaciones de compras. | 1d | 2016-11-21 | 2016-11-21 | 8d |
| 194 | 1.8.3.7.5 | Registración de comprobantes: ingresar al Sistema las operaciones de compra. | 1d | 2016-11-21 | 2016-11-21 | 8d |
| 195 | 1.8.3.7.6 | Realizar, consultar y modificar Imputaciones | 1d | 2016-11-21 | 2016-11-21 | 8d |
| 196 | 1.8.3.7.7 | Preparación de comprobantes: Ingreso de los datos de un comprobante para su posterior emisión. | 1d | 2016-11-21 | 2016-11-21 | 8d |
| 197 | 1.8.3.7.8 | Listado de saldos pendientes y vencimientos | 1d | 2016-11-21 | 2016-11-21 | 8d |
| 198 | 1.8.3.8 | **Prorrateo de Gastos** | 1d | 2016-11-21 | 2016-11-21 | 8d |
| 199 | 1.8.3.8.1 | Distribuir en forma proporcional (prorratear) el neto de un comprobante de compras entre otros comprobantes. | 1d | 2016-11-21 | 2016-11-21 | 8d |
| 200 | 1.8.3.9 | Impuestos | 1d | 2016-11-21 | 2016-11-21 | 8d |
| 201 | 1.8.3.10 | **Informes Impositivos** | 1d | 2016-11-21 | 2016-11-21 | 8d |
| 202 | 1.8.3.10.1 | Informes y otras facilidades relacionados con impuestos, como la exportación a diversos aplicativos y guarda de datos con fines fiscales. | 1d | 2016-11-21 | 2016-11-21 | 8d |
| 203 | 1.8.3.11 | **IVA Ventas / Compras** | 1d | 2016-11-21 | 2016-11-21 | 8d |
| 204 | 1.8.3.11.1 | Emisión de informes y otras funcionalidades relacionados con el Impuesto al Valor Agregado y aplicativos fiscales. | 1d | 2016-11-21 | 2016-11-21 | 8d |

| ID | WBS | Task | Duration | Start | Finish | Total slack |
| --- | --- | --- | --- | --- | --- | --- |
| 205 | 1.8.3.12 | **Regímenes Especiales – Empresa** | 1d | 2016-11-21 | 2016-11-21 | 8d |
| 206 | 1.8.3.12.1 | Los regímenes especiales para los cuales el Sistema realizará el cálculo automático | 1d | 2016-11-21 | 2016-11-21 | 8d |
| 207 | 1.8.3.12.2 | Casos con conceptos no gravados - Ingreso de regímenes especiales | 1d | 2016-11-21 | 2016-11-21 | 8d |
| 208 | 1.8.3.12.3 | Emisión de subdiarios provisorios y definitivos - Confección de Declaraciones Juradas - Informes de retenciones y percepciones - Ingreso de ajustes en la cuenta corriente - Cuentas a cobrar - Ingresos de cobranzas | 1d | 2016-11-21 | 2016-11-21 | 8d |
| 209 | 1.9 | **INVENTARIO Y AJUSTES DE STOCK** | 5d | 2016-11-21 | 2016-11-25 |  |
| 210 | 1.9.1 | Corrientes | 5d | 2016-11-21 | 2016-11-25 | 4d |
| 211 | 1.9.2 | Posadas | 5d | 2016-11-21 | 2016-11-25 | 4d |
| 212 | 1.10 | **PREPARACIÓN DE ARCHIVOS Y MIGRACIÓN** | 2d | 2016-11-29 | 2016-11-30 |  |
| 213 | 1.10.1 | Archivo de Clientes | 2d | 2016-11-29 | 2016-11-30 | 1d |
| 214 | 1.10.2 | Archivo de Limites de crédito y descuentos de clientes | 2d | 2016-11-29 | 2016-11-30 | 1d |
| 215 | 1.10.3 | Archivo de Vehiculos de Clientes | 2d | 2016-11-29 | 2016-11-30 | 1d |
| 216 | 1.10.4 | Archivo de Proveedores | 2d | 2016-11-29 | 2016-11-30 | 1d |
| 217 | 1.10.5 | Archivo de Unidades | 2d | 2016-11-29 | 2016-11-30 | 1d |
| 218 | 1.10.6 | Listas de Precio Unidades | 2d | 2016-11-29 | 2016-11-30 | 1d |
| 219 | 1.10.7 | Archivo de artículos | 2d | 2016-11-29 | 2016-11-30 | 1d |
| 220 | 1.10.8 | Archivo de Ordenes de Reparación | 2d | 2016-11-29 | 2016-11-30 | 1d |
| 221 | 1.10.9 | Archivo de Historico Ordenes de Reparación | 2d | 2016-11-29 | 2016-11-30 | 1d |
| 222 | 1.10.10 | Archivo de Ordenes Cargos Directos | 2d | 2016-11-29 | 2016-11-30 | 1d |
| 223 | 1.10.11 | Archivo de Ordenes de trabajos de Terceros | 2d | 2016-11-29 | 2016-11-30 | 1d |
| 224 | 1.10.12 | Archivo de Ordenes de trabajo en Garantía | 2d | 2016-11-29 | 2016-11-30 | 1d |
| 225 | 1.10.13 | Archivo de Presupuestos de venta de repuestos vigentes | 2d | 2016-11-29 | 2016-11-30 | 1d |
| 226 | 1.10.14 | Archivo de Ordenes Repuestos | 2d | 2016-11-29 | 2016-11-30 | 1d |
| 227 | 1.10.15 | Formato Ordenes de Compra pend. En Cabecera | 2d | 2016-11-29 | 2016-11-30 | 1d |
| 228 | 1.10.16 | Formato ordenes de Compra Pendientes | 2d | 2016-11-29 | 2016-11-30 | 1d |
| 229 | 1.10.17 | Formatos Comprobantes de Compra en cta cte | 2d | 2016-11-29 | 2016-11-30 | 1d |
| 230 | 1.10.18 | Formato Comp. Ventas en Cta Ctes | 1d | 2016-11-29 | 2016-11-29 | 2d |

| ID | WBS | Task | Type | Duration | Start | Finish | Total slack |
| --- | --- | --- | --- | --- | --- | --- | --- |
| 231 | 1.11 | **PRODUCCIÓN** |  | 1d | 2016-11-30 | 2016-11-30 |  |
| 232 | 1.11.1 | PRODUCCIÓN |  | 1d | 2016-11-30 | 2016-11-30 | 1d |
| 234 | 1.12 | Stock repuestos contra contabilidad | manual | 1d | 2016-11-03 | 2016-11-03 |  |
| 235 | 1.13 | Stock Unidades contra contabilidad | manual | 1d | 2016-11-03 | 2016-11-03 |  |
| 236 | 1.14 | Stock repuestos | manual | 1d | 2016-11-03 | 2016-11-03 |  |
| 237 | 1.15 | inventario cuenta corriente Clientes | manual | 1d | 2016-11-03 | 2016-11-03 |  |
| 238 | 1.16 | inventario cuenta corriente Proveedor | manual | 1d | 2016-11-03 | 2016-11-03 |  |
| 239 | 1.17 | Ordenes con stock de repuestos (ver que se hace) | manual | 1d | 2016-11-03 | 2016-11-03 |  |
| 240 | 1.18 | Cierre de ordenes de Garantia | manual | 1d | 2016-11-03 | 2016-11-03 |  |
| 241 | 1.19 | cambio de proceso de facturación de asesor en caja, Problemas son los controles | manual | 1d | 2016-11-03 | 2016-11-03 |  |
| 242 | 1.20 | Nota de Credito por descuento | manual | 1d | 2016-11-03 | 2016-11-03 |  |
| 243 | 1.21 | control de descuentos | manual | 1d | 2016-11-03 | 2016-11-03 |  |
| 244 | 1.22 | parametrizar privilegios de usuario del sistema para facturación | manual | 1d | 2016-11-03 | 2016-11-03 |  |
| 245 | 1.23 | apertura de unidad de negocios | manual | 1d? | 2016-11-03 | 2016-11-03 |  |
